Schedule from MS Project, 2014-09-09 to 2014-12-26.

## Calendars

- Standard: Mon-Fri 08:00-12:00, 13:00-17:00; Sat-Sun off.

## Resources

| Resource |
| --- |
| Project Team |
| HoangLD |
| Duypv |
| KhiemDN |
| TuanTA |

## Schedule

| ID | WBS | Task | Type | Duration | Start | Finish | Predecessors | Total slack | Free slack | Constraint | Resources | Work |
| --- | --- | --- | --- | --- | --- | --- | --- | --- | --- | --- | --- | --- |
| 1 | 1 | **LFMS** |  | 78d | 2014-09-09 | 2014-12-26 |  | 0d |  |  |  | 1942.56h |
| 2 | 1.1 | **Inception** |  | 14d | 2014-09-09 | 2014-09-26 |  | 18d | 2d |  |  | 282.56h |
| 3 | 1.1.1 | Prepare project |  | 1d | 2014-09-09 | 2014-09-09 |  | 18.85d | 0d | start no earlier than 2014-09-09 | Project Team [70%] | 5.6h |
| 4 | 1.1.2 | System feasible study |  | 1d | 2014-09-10 | 2014-09-10 | 3 | 18.85d | 0d | start no earlier than 2014-09-10 | HoangLD [80%]; Duypv [80%] | 12.8h |
| 5 | 1.1.3 | Kick-off meeting | milestone | 0.15d | 2014-09-11 | 2014-09-11 | 4 | 18.85d | 0d | start no earlier than 2014-09-11 | Project Team [80%] | 0.96h |
| 6 | 1.1.4 | Study business domain and context |  | 1d | 2014-09-12 | 2014-09-12 |  | 21.25d | 0d | start no earlier than 2014-09-12 | HoangLD [50%]; Duypv [50%] | 8h |
| 7 | 1.1.5 | Define business situation |  | 1d | 2014-09-15 | 2014-09-15 | 6 | 21.25d | 1d | start no earlier than 2014-09-15 | Duypv [50%] | 4h |
| 8 | 1.1.6 | Define project and system scope |  | 1d | 2014-09-17 | 2014-09-17 | 7 | 20.25d | 1d | start no earlier than 2014-09-17 | Duypv | 8h |
| 9 | 1.1.7 | Write report No.1: Introduction |  | 1d | 2014-09-19 | 2014-09-19 | 8 | 19.25d | 0d | start no earlier than 2014-09-19 | Duypv; KhiemDN | 16h |
| 10 | 1.1.8 | Review & update report no.1 : Draft vesion |  | 0.25d | 2014-09-22 | 2014-09-22 | 9 | 19.25d | 0.75d | start no earlier than 2014-09-19 | KhiemDN; Duypv | 4h |
| 11 | 1.1.9 | Submit report no.1 final version | milestone | 0d | 2014-09-23 | 2014-09-23 | 10 | 18.5d | 0d | start no earlier than 2014-09-23 | Duypv |  |
| 12 | 1.1.10 | **Technologies** |  | 5d | 2014-09-11 | 2014-09-18 |  | 18.85d |  |  |  | 59.2h |
| 13 | 1.1.10.1 | Prepare development enviroment |  | 2d | 2014-09-11 | 2014-09-15 | 5 | 18.85d | 0d | start no earlier than 2014-09-09 | KhiemDN [30%]; TuanTA [30%] | 9.6h |
| 14 | 1.1.10.2 | Install SQL server 2008 |  | 1d | 2014-09-11 | 2014-09-12 | 5 | 28.85d |  | start no earlier than 2014-09-11 | Project Team [20%] | 1.6h |
| 15 | 1.1.10.3 | Review technology and famework |  | 3d | 2014-09-15 | 2014-09-18 | 13 | 18.85d | 0d | start no earlier than 2014-09-12 | KhiemDN; TuanTA | 48h |
| 16 | 1.1.11 | **Requirements** |  | 9d | 2014-09-16 | 2014-09-26 |  | 18d |  |  |  | 120h |
| 17 | 1.1.11.1 | Collect business requirements and processes |  | 3d | 2014-09-18 | 2014-09-23 | 15 | 18.85d | 0d | start no earlier than 2014-09-15 | TuanTA [50%]; KhiemDN [50%] | 24h |
| 18 | 1.1.11.2 | Create draft screen prototypes |  | 6d | 2014-09-16 | 2014-09-23 | 5 | 18d | 0d | start no earlier than 2014-09-16 | HoangLD | 48h |
| 19 | 1.1.11.3 | Review and edit sceen prototypes |  | 3d | 2014-09-24 | 2014-09-26 | 18 | 18d | 0d | start no earlier than 2014-09-18 | HoangLD | 24h |
| 20 | 1.1.11.4 | Complete draft screen prototypes | milestone | 0d | 2014-09-26 | 2014-09-26 | 19 | 18d |  | start no earlier than 2014-09-22 | HoangLD |  |
| 21 | 1.1.11.5 | Create draff software requirement |  | 3d | 2014-09-23 | 2014-09-26 | 17 | 18.85d | 0d | start no earlier than 2014-09-15 | TuanTA | 24h |
| 22 | 1.1.11.6 | Complete draff softwarerequirement | milestone | 0d | 2014-09-26 | 2014-09-26 | 21 | 18.85d |  | start no earlier than 2014-09-22 | TuanTA |  |
| 23 | 1.1.12 | **Develop Project Plan** |  | 3.5d | 2014-09-23 | 2014-09-26 |  | 18.5d |  |  |  | 44h |
| 24 | 1.1.12.1 | Problem definition |  | 0.5d | 2014-09-23 | 2014-09-23 | 11 | 19d | 0d | start no earlier than 2014-09-16 | KhiemDN | 4h |
| 25 | 1.1.12.2 | Create Work breakdown structure |  | 0.5d | 2014-09-23 | 2014-09-23 | 24 | 19d | 0d | start no earlier than 2014-09-17 | KhiemDN | 4h |
| 26 | 1.1.12.3 | Create project schedule |  | 2d | 2014-09-23 | 2014-09-24 | 11 | 18.5d | 0d | start no earlier than 2014-09-18 | Duypv | 16h |
| 27 | 1.1.12.4 | Develop report no.2: Project management Plan |  | 0.5d | 2014-09-24 | 2014-09-24 | 25 | 19d | 0.5d | start no earlier than 2014-09-15 | KhiemDN | 4h |
| 28 | 1.1.12.5 | Review and edit project management plan |  | 1d | 2014-09-25 | 2014-09-25 | 27, 26 | 18.5d | 0d | start no earlier than 2014-09-23 | KhiemDN | 8h |
| 29 | 1.1.12.6 | Review and give comment Report No.2: Draf version |  | 0.5d | 2014-09-26 | 2014-09-26 | 28 | 18.5d | 0d |  | KhiemDN; Duypv | 8h |
| 30 | 1.1.12.7 | Submit report no.2 final version | milestone | 0d | 2014-09-26 | 2014-09-26 | 29 | 18.5d |  |  | KhiemDN |  |

| ID | WBS | Task | Type | Duration | Start | Finish | Predecessors | Total slack | Free slack | Constraint | Resources | Work |
| --- | --- | --- | --- | --- | --- | --- | --- | --- | --- | --- | --- | --- |
| 31 | 1.2 | **Ebolaration** |  | 22d | 2014-10-01 | 2014-10-30 | 2 | 7d | 0d |  |  | 516h |
| 32 | 1.2.1 | **Technologies** |  | 9d | 2014-10-01 | 2014-10-13 |  | 20d |  |  |  | 72h |
| 33 | 1.2.1.1 | Coding prototypes |  | 9d | 2014-10-01 | 2014-10-13 |  | 20d |  | start no earlier than 2014-10-01 | HoangLD | 72h |
| 34 | 1.2.2 | **User Requirements Specification** |  | 4d | 2014-10-01 | 2014-10-06 |  | 25d |  |  |  | 64h |
| 35 | 1.2.2.1 | Create use-case model |  | 4d | 2014-10-01 | 2014-10-06 |  | 25d |  | start no earlier than 2014-10-01 | TuanTA | 32h |
| 36 | 1.2.2.2 | Develop main functions and processes |  | 4d | 2014-10-01 | 2014-10-06 |  | 25d |  | start no earlier than 2014-10-01 | KhiemDN | 32h |
| 37 | 1.2.3 | **System Requirement Specification** |  | 9d | 2014-10-02 | 2014-10-14 |  | 19d |  |  |  | 72h |
| 38 | 1.2.3.1 | Create entity relationship diagram |  | 3d | 2014-10-02 | 2014-10-06 |  | 25d |  | start no earlier than 2014-10-02 | Duypv | 24h |
| 39 | 1.2.3.2 | Complete ERD | milestone | 0d | 2014-10-07 | 2014-10-07 |  | 19d | 0d | start no earlier than 2014-10-07 | Duypv |  |
| 40 | 1.2.3.3 | Create report No.3 |  | 4d | 2014-10-07 | 2014-10-10 | 39 | 19d | 0d |  | KhiemDN | 32h |
| 41 | 1.2.3.4 | Review & give comment report No.3: Draf version |  | 2d | 2014-10-13 | 2014-10-14 | 40 | 19d | 0d |  | KhiemDN | 16h |
| 42 | 1.2.3.5 | Sumit Report No.3 : final version | milestone | 0d | 2014-10-14 | 2014-10-14 | 41 | 19d |  |  | KhiemDN |  |
| 43 | 1.2.4 | **Design** |  | 18d | 2014-10-07 | 2014-10-30 |  | 7d |  |  |  | 308h |
| 44 | 1.2.4.1 | Create Design Overview |  | 0.5d | 2014-10-07 | 2014-10-07 |  | 24.5d |  | start no earlier than 2014-10-07 | Duypv | 4h |
| 45 | 1.2.4.2 | **System Architectural Design** |  | 18d | 2014-10-07 | 2014-10-30 |  | 7d |  |  |  | 304h |
| 46 | 1.2.4.2.1 | Define the system structure and collect system features |  | 0.5d | 2014-10-07 | 2014-10-07 |  | 24.5d |  | start no earlier than 2014-10-07 | TuanTA | 4h |
| 47 | 1.2.4.2.2 | Study the common System Architeture |  | 2d | 2014-10-08 | 2014-10-09 |  | 22d |  | start no earlier than 2014-10-08 | TuanTA | 16h |
| 48 | 1.2.4.2.3 | Choice of System Architeture |  | 0.5d | 2014-10-10 | 2014-10-10 |  | 21.5d |  | start no earlier than 2014-10-10 | TuanTA | 4h |
| 49 | 1.2.4.2.4 | Discussion of Alternative Design |  | 1d | 2014-10-13 | 2014-10-13 |  | 20d |  | start no earlier than 2014-10-13 | TuanTA | 8h |
| 50 | 1.2.4.2.5 | Detail database design |  | 5d | 2014-10-08 | 2014-10-14 |  | 19d |  | start no earlier than 2014-10-08 | Duypv | 40h |
| 51 | 1.2.4.2.6 | **Component Diagram** |  | 14d | 2014-10-13 | 2014-10-30 |  | 7d |  |  |  | 168h |
| 52 | 1.2.4.2.6.1 | Define the component |  | 1d | 2014-10-13 | 2014-10-13 |  | 18d | 0d | start no earlier than 2014-10-13 | HoangLD | 8h |
| 53 | 1.2.4.2.6.2 | General component diagram |  | 1d | 2014-10-14 | 2014-10-14 | 52 | 18d | 0d |  | HoangLD | 8h |
| 54 | 1.2.4.2.6.3 | Detail component diagram |  | 1d | 2014-10-15 | 2014-10-15 | 53 | 18d |  |  | HoangLD | 8h |

| ID | WBS | Task | Type | Duration | Start | Finish | Predecessors | Total slack | Free slack | Constraint | Resources | Work |
| --- | --- | --- | --- | --- | --- | --- | --- | --- | --- | --- | --- | --- |
| 55 | 1.2.4.2.6.4 | **Detailed description of components** |  | 13d | 2014-10-14 | 2014-10-30 |  | 7d |  |  |  | 144h |
| 56 | 1.2.4.2.6.4.1 | CRC Cards (Class-Responsibility-Collaborators) |  | 5d | 2014-10-14 | 2014-10-20 |  | 7d | 0d | start no earlier than 2014-10-14 | KhiemDN; TuanTA | 80h |
| 57 | 1.2.4.2.6.4.2 | Create Class diagram |  | 4d | 2014-10-21 | 2014-10-24 | 56 | 7d | 0d |  | Duypv | 32h |
| 58 | 1.2.4.2.6.4.3 | Detail description of component (Client component) |  | 4d | 2014-10-27 | 2014-10-30 | 57 | 7d |  |  | HoangLD | 32h |
| 59 | 1.2.4.2.7 | **User Interface Design** |  | 5d | 2014-10-14 | 2014-10-20 |  | 15d |  |  |  | 40h |
| 60 | 1.2.4.2.7.1 | Description of the UI |  | 5d | 2014-10-14 | 2014-10-20 |  | 15d |  | start no earlier than 2014-10-14 | Duypv | 40h |
| 61 | 1.2.4.2.8 | Create Report No.4 |  | 2d | 2014-10-21 | 2014-10-22 |  | 12d | 0d | start no earlier than 2014-10-21 | KhiemDN | 16h |
| 62 | 1.2.4.2.9 | Review and update comments report #4 |  | 1d | 2014-10-23 | 2014-10-23 | 61 | 12d | 0d |  | KhiemDN | 8h |
| 63 | 1.2.4.2.10 | Sumit Report No.4 | milestone | 0d | 2014-10-23 | 2014-10-23 | 62 | 12d |  |  | KhiemDN |  |
| 64 | 1.3 | **Contruction** |  | 34d | 2014-10-31 | 2014-12-17 | 31 | 0d |  |  |  | 1072h |
| 65 | 1.3.1 | **Requirements & Design** |  | 4d | 2014-10-31 | 2014-11-05 |  | 30d |  |  |  | 64h |
| 66 | 1.3.1.1 | Refine requirement documents |  | 2d | 2014-10-31 | 2014-11-03 |  | 30d | 0d | start no earlier than 2014-10-24 | KhiemDN; TuanTA | 32h |
| 67 | 1.3.1.2 | Refine design documents |  | 2d | 2014-11-04 | 2014-11-05 | 66 | 30d |  |  | KhiemDN; TuanTA | 32h |
| 68 | 1.3.2 | **Coding & Unit Test** |  | 27d | 2014-10-31 | 2014-12-08 |  | 7d |  |  |  | 848h |
| 69 | 1.3.2.1 | Login, Logout, Change Password, View home, Notify |  | 3d | 2014-10-31 | 2014-11-04 |  | 7d | 0d | start no earlier than 2014-10-30 | TuanTA | 24h |
| 70 | 1.3.2.2 | Manage Calendar Event |  | 8d | 2014-10-31 | 2014-11-11 |  | 7d | 0d | start no earlier than 2014-10-30 | KhiemDN | 64h |
| 71 | 1.3.2.3 | Manage Case |  | 5d | 2014-11-05 | 2014-11-11 | 69 | 7d | 0d |  | TuanTA | 40h |
| 72 | 1.3.2.4 | Unit test Login, Logout, Change Pasword, View, Notify & Manage Case |  | 3d | 2014-11-12 | 2014-11-14 | 71 | 7d | 0d |  | KhiemDN | 24h |
| 73 | 1.3.2.5 | Unit Test Manage Calendar Event |  | 3d | 2014-11-12 | 2014-11-14 | 70 | 7d | 0d |  | TuanTA | 24h |
| 74 | 1.3.2.6 | Manage Case Detail |  | 21d | 2014-10-31 | 2014-11-28 |  | 8d | 0d | start no earlier than 2014-10-30 | Duypv; HoangLD | 336h |
| 75 | 1.3.2.7 | Manage Customer Group |  | 4d | 2014-11-17 | 2014-11-20 | 73 | 7d | 0d |  | KhiemDN | 32h |
| 76 | 1.3.2.8 | Manage Customer |  | 4d | 2014-11-17 | 2014-11-20 | 72 | 7d | 0d |  | TuanTA | 32h |
| 77 | 1.3.2.9 | Unit Test Customer Group |  | 1d | 2014-11-21 | 2014-11-21 | 75 | 7d | 0d |  | TuanTA | 8h |
| 78 | 1.3.2.10 | Unit Test Customer |  | 1d | 2014-11-21 | 2014-11-21 | 76 | 7d | 0d |  | KhiemDN | 8h |
| 79 | 1.3.2.11 | Manage Staff Group |  | 3d | 2014-11-24 | 2014-11-26 | 78 | 7d | 0d |  | TuanTA | 24h |
| 80 | 1.3.2.12 | Manage Staff |  | 6d | 2014-11-27 | 2014-12-04 | 79 | 7d | 0d |  | TuanTA | 48h |
| 81 | 1.3.2.13 | Manage Service Type |  | 3d | 2014-11-24 | 2014-11-26 | 77 | 7d | 0d |  | KhiemDN | 24h |
| 82 | 1.3.2.14 | Manage Service |  | 3d | 2014-11-27 | 2014-12-01 | 81 | 7d | 0d |  | KhiemDN | 24h |
| 83 | 1.3.2.15 | Manage Office |  | 3d | 2014-12-02 | 2014-12-04 | 82 | 7d | 0d |  | KhiemDN | 24h |
| 84 | 1.3.2.16 | Unit Test Manage Case Detail |  | 4d | 2014-12-01 | 2014-12-04 | 74 | 8d | 0d | start no earlier than 2014-11-27 | HoangLD; Duypv | 64h |
| 85 | 1.3.2.17 | Unit Test Staff Group |  | 1d | 2014-12-05 | 2014-12-05 | 84 | 8d |  | start no earlier than 2014-12-04 | KhiemDN | 8h |
| 86 | 1.3.2.18 | Unit Test Service Type |  | 1d | 2014-12-05 | 2014-12-05 | 84 | 8d |  | start no earlier than 2014-12-04 | TuanTA | 8h |
| 87 | 1.3.2.19 | Unit Test Manage Staff |  | 2d | 2014-12-05 | 2014-12-08 | 80 | 7d |  | start no earlier than 2014-12-04 | KhiemDN | 16h |
| 88 | 1.3.2.20 | Unit Test Manage Service & Office |  | 2d | 2014-12-05 | 2014-12-08 | 83 | 7d | 0d | start no earlier than 2014-12-04 | TuanTA | 16h |
| 89 | 1.3.2.21 | Complete coding | milestone | 0d | 2014-12-08 | 2014-12-08 | 88 | 7d |  | start no earlier than 2014-12-05 | Project Team |  |

| ID | WBS | Task | Type | Duration | Start | Finish | Predecessors | Total slack | Free slack | Constraint | Resources | Work |
| --- | --- | --- | --- | --- | --- | --- | --- | --- | --- | --- | --- | --- |
| 90 | 1.3.3 | **Testing** |  | 34d | 2014-10-31 | 2014-12-17 |  | 0d |  |  |  | 160h |
| 91 | 1.3.3.1 | **Create test documents (Report 5)** |  | 4d | 2014-10-31 | 2014-11-05 |  | 30d |  |  |  | 64h |
| 92 | 1.3.3.1.1 | Create test plan |  | 1d | 2014-10-31 | 2014-10-31 |  | 30d | 0d | start no earlier than 2014-10-24 | Duypv; HoangLD | 16h |
| 93 | 1.3.3.1.2 | Create test case |  | 2d | 2014-11-03 | 2014-11-04 | 92 | 30d | 0d |  | HoangLD; Duypv | 32h |
| 94 | 1.3.3.1.3 | Create test check list |  | 1d | 2014-11-05 | 2014-11-05 | 93 | 30d |  |  | Duypv; HoangLD | 16h |
| 95 | 1.3.3.2 | Execute functional test |  | 3d | 2014-12-05 | 2014-12-09 |  | 3d | 0d | start no earlier than 2014-12-05 | Project Team | 24h |
| 96 | 1.3.3.3 | Execute regression test |  | 3d | 2014-12-10 | 2014-12-12 | 95 | 3d |  | start no earlier than 2014-12-10 | Project Team | 24h |
| 97 | 1.3.3.4 | Create Report No.5 |  | 2d | 2014-12-10 | 2014-12-11 |  | 0d |  | start no earlier than 2014-12-10 | KhiemDN | 16h |
| 98 | 1.3.3.5 | Review and give comment Report No.5 |  | 1d | 2014-12-12 | 2014-12-12 | 97 | 0d |  |  | KhiemDN | 8h |
| 99 | 1.3.3.6 | Delivery Report No.5 | milestone | 0d | 2014-12-12 | 2014-12-12 | 98 | 0d |  |  | KhiemDN |  |
| 100 | 1.3.3.7 | Create Report No.6 |  | 2d | 2014-12-15 | 2014-12-16 | 99 | 0d |  |  | KhiemDN | 16h |
| 101 | 1.3.3.8 | Review and give comment Report No.6 |  | 1d | 2014-12-17 | 2014-12-17 | 100 | 0d |  |  | KhiemDN | 8h |
| 102 | 1.3.3.9 | Delivery Report No.6 | milestone | 0d | 2014-12-17 | 2014-12-17 | 101 | 0d |  |  | KhiemDN |  |
| 103 | 1.4 | **Transition** |  | 6d | 2014-12-18 | 2014-12-26 | 64 | 0d |  |  |  | 72h |
| 104 | 1.4.1 | **Preclosing** |  | 3d | 2014-12-18 | 2014-12-23 |  | 0d |  |  |  | 24h |
| 105 | 1.4.1.1 | Conduct project review-lessons learned | manual | 0.5d | 2014-12-18 | 2014-12-18 |  |  |  |  | Project Team | 4h |
| 106 | 1.4.1.2 | Complete program and documents |  | 2.5d | 2014-12-18 | 2014-12-22 |  | 3.5d |  | start no earlier than 2014-12-18 | Project Team | 20h |
| 107 | 1.4.1.3 | Submit the last document and CD source code | milestone | 0d | 2014-12-23 | 2014-12-23 |  | 3d |  | start no earlier than 2014-12-23 | KhiemDN |  |
| 108 | 1.4.2 | **Closing** |  | 6d | 2014-12-18 | 2014-12-26 |  | 0d |  |  |  | 48h |
| 109 | 1.4.2.1 | Prepare for presentation |  | 3d | 2014-12-18 | 2014-12-22 |  | 3d |  | start no earlier than 2014-12-08 | Project Team | 24h |
| 110 | 1.4.2.2 | Represent capstone project |  | 3d | 2014-12-22 | 2014-12-24 |  | 1d |  | start no earlier than 2014-12-22 | Project Team | 24h |
| 111 | 1.4.2.3 | Project completed | milestone | 0d | 2014-12-26 | 2014-12-26 |  | 0d |  | start no earlier than 2014-12-26 |  |  |
